# project QCM

How a schedule from MS Project changed from version to version. A marks actual dates.

## Version 1 (saved 2015-12-01)

Note of the change: Création du diagramme de classe, mise en ordre dans la documentation, création des images des cas d'utilisations

| ID | WBS | Task | Duration | Start | Finish | Predecessors | Complete | Total float |
| --- | --- | --- | --- | --- | --- | --- | --- | --- |
| 1 | 1 | **Rédaction** | 66.75d | 2015-10-10 A | 2015-12-14 |  | 20% | 0d |
| 2 |  | Création du cahier des charges générales | 3.5d | 2015-10-10 A | 2015-10-12 A |  | 100% |  |
| 3 |  | Rédactions des spécifications générales | 15d | 2015-10-12 A | 2015-10-27 | 2 | 65% | 0d |
| 4 |  | Rédaction des spécifications détaillées - Administrations | 33.25d | 2015-10-27 | 2015-11-29 | 3 |  | 0d |
| 5 |  | Rédaction des spécifications détaillées - Application Mobile | 15d | 2015-11-29 | 2015-12-14 | 4 |  | 0d |
| 6 | 2 | **Développement** | 155d | 2015-12-14 | 2016-05-21 |  |  | 15.75d |
| 7 |  | Développement Application - Android | 35d | 2015-12-14 | 2016-01-21 | 5 |  | 135.75d |
| 8 |  | Développement Application Ios | 35d | 2016-01-21 | 2016-02-25 | 5 |  | 100.75d |
| 9 |  | Développement Application Mobile Windows Phone | 35d | 2016-02-25 | 2016-03-31 | 5 |  | 65.75d |
| 10 |  | Développement Administration | 50d | 2016-03-31 | 2016-05-21 | 4 |  | 6.25d |
| 11 | 3 | **Test** | 35d | 2016-05-21 | 2016-06-25 |  |  | 0d |
| 12 |  | Environement de Test | 7d | 2016-05-21 | 2016-05-28 | 5, 4 |  | 0d |
| 13 |  | test Fonction applicative | 8.75d | 2016-05-28 | 2016-06-05 | 7, 8, 9, 12 |  | 8.75d |
| 14 |  | test back Office | 8.75d | 2016-06-05 | 2016-06-14 | 10, 12 |  | 0d |
| 15 |  | Environement de production et déploiement | 10.5d | 2016-06-14 | 2016-06-25 | 13, 14, 12 |  | 0d |

## Version 2 (data date 2016-01-27, saved 2016-01-27)

Note of the change: Mise a jour de la documentation

Last finish stays 2016-06-25. Complete tasks 1 → 2.

Added:

| ID | Task | Duration | Start | Finish | Predecessors | Constraint |
| --- | --- | --- | --- | --- | --- | --- |
| 3 | Validation cahier des charges | 0d | 2015-12-02 | 2015-12-02 |  | start no earlier than 2015-12-02 |
| 7 | Validation Fin documentation | 0d | 2015-12-14 | 2015-12-14 | 6 |  |
| 10 | Validation fin Développement android | 0d | 2016-01-21 | 2016-01-21 | 9 | start no earlier than 2016-01-21 |
| 12 | Validation fin Développement IOS | 0d | 2016-02-25 | 2016-02-25 | 11 | start no earlier than 2016-02-25 |
| 14 | Validation fin développement Windows Phone | 0d | 2016-03-31 | 2016-03-31 | 13 |  |
| 16 | Validatin fin Développement BackEnd | 0d | 2016-05-21 | 2016-05-21 | 15 |  |
| 22 | Validation fin de projet | 0d | 2016-06-25 | 2016-06-25 | 21 | finish no earlier than 2015-10-09 |

Changed:

| ID | Task | Start | Finish | Complete | Total float | Predecessors | Other |
| --- | --- | --- | --- | --- | --- | --- | --- |
| 1 | **Rédaction** |  |  | 20% → 88% | 0d → 190d |  | baseline start none → 2015-10-10; baseline finish none → 2015-12-14 |
| 2 | Création du cahier des charges générales |  |  |  |  |  | baseline start none → 2015-10-10; baseline finish none → 2015-10-12 |
| 4 | Rédactions des spécifications générales |  | 2015-10-27 A | 65% → 100% | 0d → none |  | baseline start none → 2015-10-12; baseline finish none → 2015-10-27 |
| 5 | Rédaction des spécifications détaillées - Administrations | 2015-10-27 A |  | 0% → 80% | 0d → 12.75d |  | baseline start none → 2015-10-27; baseline finish none → 2015-11-29 |
| 6 | Rédaction des spécifications détaillées - Application Mobile | 2015-11-29 A |  | 0% → 90% |  |  | baseline start none → 2015-11-29; baseline finish none → 2015-12-14 |
| 8 | **Développement** | 2015-12-14 A |  | 0% → 6% | 15.75d → 35d |  | baseline start none → 2015-12-14; baseline finish none → 2016-05-21 |
| 9 | Développement Application - Android |  |  |  |  | 6 → 7 | baseline start none → 2015-12-14; baseline finish none → 2016-01-21 |
| 11 | Développement Application Ios |  |  |  |  |  | baseline start none → 2016-01-21; baseline finish none → 2016-02-25 |
| 13 | Développement Application Mobile Windows Phone |  |  |  |  |  | baseline start none → 2016-02-25; baseline finish none → 2016-03-31 |
| 15 | Développement Administration | 2016-03-31 A |  | 0% → 20% |  |  | baseline start none → 2016-03-31; baseline finish none → 2016-05-21 |
| 17 | **Test** |  |  |  |  |  | baseline start none → 2016-05-21; baseline finish none → 2016-06-25 |
| 18 | Environement de Test |  |  |  |  |  | baseline start none → 2016-05-21; baseline finish none → 2016-05-28 |
| 19 | test Fonction applicative |  |  |  |  |  | baseline start none → 2016-05-28; baseline finish none → 2016-06-05 |
| 20 | test back Office |  |  |  |  |  | baseline start none → 2016-06-05; baseline finish none → 2016-06-14 |
| 21 | Environement de production et déploiement |  |  |  |  |  | baseline start none → 2016-06-14; baseline finish none → 2016-06-25 |

## Version 3 (data date 2016-01-27, saved 2016-01-28)

Note of the change: Mise a jour de la documentation : cahier des charges spécification général Création de WBS Général Mise a jour du project

Last finish stays 2016-06-25. Complete tasks 2 → 3.

Changed:

| ID | Task | Finish | Complete | Total float |
| --- | --- | --- | --- | --- |
| 1 | **Rédaction** |  | 88% → 90% |  |
| 6 | Rédaction des spécifications détaillées - Application Mobile | 2015-12-14 A | 90% → 100% | 0d → none |

## Version 4 (data date 2016-05-18, saved 2016-05-18)

Note of the change: Update documentation UML

Last finish stays 2016-06-25. Complete tasks 3 → 4.

Changed:

| ID | Task | Start | Finish | Duration | Complete | Total float |
| --- | --- | --- | --- | --- | --- | --- |
| 3 | Validation cahier des charges | 2015-12-02 A | 2015-12-02 A |  | 0% → 100% | 514.5d → none |
| 8 | **Développement** | 2015-12-14 A → 2015-11-29 A (-15d) | 2016-05-21 → 2016-03-31 (-51d) | 155d → 120d | 6% → 57% | 35d → 85d |
| 9 | Développement Application - Android | 2015-12-14 A |  |  | 0% → 60% |  |
| 11 | Développement Application Ios | 2016-01-21 A |  |  | 0% → 20% |  |
| 13 | Développement Application Mobile Windows Phone | 2016-02-25 A |  |  | 0% → 66% |  |
| 15 | Développement Administration | 2016-03-31 A → 2015-11-29 A (-123d) | 2016-05-21 → 2016-01-21 (-121d) |  | 20% → 75% | 6.25d → 126.25d |
| 16 | Validatin fin Développement BackEnd | 2016-05-21 → 2016-01-21 (-121d) | 2016-05-21 → 2016-01-21 (-121d) |  |  | 87.5d → 388.5d |
